# PocetniPlan_Gruntovnica

Schedule from MS Project, 2025-04-29 to 2025-09-23.

## Calendars

- Calenda RIS: Mon-Fri 08:00-12:00, 13:00-17:00; Sat-Sun off.

## Resources

| Resource |
| --- |
| Voditelj |
| Sistem analitičar |
| Projektant |
| Razvojnik |
| Tester |

## Schedule

| ID | WBS | Task | Duration | Start | Finish | Predecessors | Total slack | Free slack | Constraint | Resources | Work |
| --- | --- | --- | --- | --- | --- | --- | --- | --- | --- | --- | --- |
| 1 | 1 | **Projekt - Online aukcija** | 106d | 2025-04-29 | 2025-09-23 |  | 0d |  |  |  | 1704h |
| 2 | 1.1 | **Pokretanje projekta** | 13d | 2025-04-29 | 2025-05-15 |  | 0.88d |  |  |  | 184h |
| 3 | 1.1.1 | Kreiranje prijedloga projekta | 3d | 2025-04-29 | 2025-05-01 |  | 0.88d | 0d | finish no earlier than 2025-05-01 | Voditelj | 24h |
| 4 | 1.1.2 | Analiza izvodljivosti | 5d | 2025-05-02 | 2025-05-08 | 3 | 0.88d | 0d | start no earlier than 2009-03-14 | Voditelj; Projektant; Sistem analitičar | 120h |
| 5 | 1.1.3 | Izrada plana projekta | 5d | 2025-05-09 | 2025-05-15 | 4 | 0.88d | 0d |  | Voditelj | 40h |
| 6 | 1.2 | **Analiza** | 20d | 2025-05-16 | 2025-06-12 |  | 0.88d |  |  |  | 424h |
| 7 | 1.2.1 | Elicitacija funkcionalnih zahtijeva | 7d | 2025-05-16 | 2025-05-26 | 5 | 0.88d | 0d |  | Sistem analitičar | 56h |
| 8 | 1.2.2 | Kreiranje slučajeva korištenja | 7d | 2025-05-16 | 2025-05-26 | 7SS | 0.88d | 0d |  | Sistem analitičar | 56h |
| 9 | 1.2.3 | Funkcionalna analiza - model | 13d | 2025-05-27 | 2025-06-12 | 8 | 0.88d | 0d |  | Sistem analitičar | 104h |
| 10 | 1.2.4 | Ponašajna analiza - model | 13d | 2025-05-27 | 2025-06-12 | 9SS | 0.88d | 0d |  | Sistem analitičar | 104h |
| 11 | 1.2.5 | Strukturalna analiza - model | 13d | 2025-05-27 | 2025-06-12 | 10SS | 0.88d | 0d |  | Sistem analitičar | 104h |
| 12 | 1.3 | **Oblikovanje sustava** | 30d | 2025-06-13 | 2025-07-24 |  | 0.88d |  |  |  | 560h |
| 13 | 1.3.1 | Oblikovanje višeslojne arhitekture | 10d | 2025-06-13 | 2025-06-26 | 11 | 0.88d | 0d |  | Projektant | 80h |
| 14 | 1.3.2 | Modeliranje objekata domene | 10d | 2025-06-27 | 2025-07-10 | 13 | 0.88d | 0d |  | Projektant; Razvojnik | 160h |
| 15 | 1.3.3 | Modeliranje korisničkog sučelja | 10d | 2025-07-11 | 2025-07-24 | 14 | 0.88d | 0d |  | Projektant; Razvojnik | 160h |
| 16 | 1.3.4 | Modeliranje sloja perzistencije | 10d | 2025-07-11 | 2025-07-24 | 15SS | 0.88d | 0d |  | Projektant; Razvojnik | 160h |
| 17 | 1.4 | **Implementacija** | 30d | 2025-07-25 | 2025-09-04 |  | 0.88d |  |  |  | 400h |
| 18 | 1.4.1 | Implementacija razreda domene | 10d | 2025-07-25 | 2025-08-07 | 16 | 0.88d | 0d |  | Razvojnik | 80h |
| 19 | 1.4.2 | Kreiranje "web" korisničkog sučelja | 12d | 2025-08-08 | 2025-08-25 | 18 | 0.88d | 0d |  | Razvojnik | 96h |
| 20 | 1.4.3 | Realizacija perzistencije O/R mapiranjem | 8d | 2025-08-26 | 2025-09-04 | 19 | 0.88d | 0d |  | Razvojnik | 64h |
| 21 | 1.4.4 | Implementacija mehanizama komunikacije među slojevima | 20d | 2025-08-08 | 2025-09-04 | 19SS, 20FF | 0.88d | 0d |  | Razvojnik | 160h |
| 22 | 1.5 | **Testiranje** | 13d | 2025-09-05 | 2025-09-23 |  | 0d |  |  |  | 136h |
| 23 | 1.5.1 | Testiranje funkcionalnosti sloja domene | 5d | 2025-09-05 | 2025-09-10 | 21 | 0.88d | 0d |  | Tester | 40h |
| 24 | 1.5.2 | Testiranje perzistencije | 5d | 2025-09-10 | 2025-09-15 | 23 | 0.88d | 0d | finish no earlier than 2009-06-21 | Tester | 40h |
| 25 | 1.5.3 | Testiranje ponašanja elemenata sučelja | 4d | 2025-09-15 | 2025-09-19 | 24 | 0.25d |  |  | Tester | 32h |
| 26 | 1.5.4 | Testovi cjelokupnog sustava | 3d | 2025-09-21 | 2025-09-23 | 25 | 0d |  | finish no earlier than 2025-09-23 | Tester | 24h |
